# Revit Sample Project

Schedule from Primavera P6, 2021-05-03 to 2021-10-25, data date 2011-06-01.

## Calendars

- Trades - 5 Day Workweek: Mon-Fri 08:00-11:59, 13:00-16:59; Sat-Sun off.
- 5x10: Mon-Fri 07:00-11:59, 13:00-17:59; Sat-Sun off.

## Resources

| Resource | Group | Rate |
| --- | --- | --- |
| Concrete Foundation Subcontractor | labor | 100 |
| Laborer-Construction | labor | 35 |
| Roofing Subcontractor | labor | 75 |
| Specialty Metal Fabricator Subcontractor | labor | 110 |
| Thermal Protection Subcontractor | labor | 120 |
| Painter | labor | 70 |

## Schedule

| ID | WBS | Activity | Type | Duration | Start | Finish | Predecessors | Constraint | Calendar | Resources | Cost | Responsibility | Phase | Department | Key Milestones |
| --- | --- | --- | --- | --- | --- | --- | --- | --- | --- | --- | --- | --- | --- | --- | --- |
|  | 1 | **Revit Building** |  |  | 2021-05-03 | 2021-10-25 |  |  |  |  |  |  |  |  |  |
| EC2650 |  | ROOTED ACTIVITY |  | 5d | 2021-05-03 | 2021-05-07 |  | start on or after 2021-05-01 |  |  |  |  |  |  |  |
|  | 0 | **Key Milestones** |  |  | 2021-06-01 | 2021-06-07 |  |  |  |  |  |  |  |  |  |
| EC2660 |  | Completed Building |  | 5d | 2021-06-01 | 2021-06-07 |  | start on or after 2021-06-01 |  |  |  |  |  |  |  |
|  | 1 | **Structural Works** |  |  | 2021-05-03 | 2021-08-09 |  |  |  |  |  |  |  |  |  |
|  | 1 | **SubStructure** |  |  | 2021-05-03 | 2021-06-11 |  |  |  |  |  |  |  |  |  |
| EC2580 |  | Excavation and Preparation |  | 5d | 2021-05-03 | 2021-05-07 |  | start on or after 2021-05-01 |  |  |  |  |  |  |  |
| EC2590 |  | Piling Mat |  | 5d | 2021-05-10 | 2021-05-14 | EC2580 |  |  |  |  |  |  |  |  |
| EC2600 |  | Piling Foundation + Curing |  | 5d | 2021-05-17 | 2021-05-21 | EC2590 |  |  |  |  |  |  |  |  |
| EC2610 |  | Cutting Pile Heads |  | 5d | 2021-05-24 | 2021-05-28 | EC2600 |  |  |  |  |  |  |  |  |
| EC2620 |  | Pile Caps |  | 5d | 2021-05-31 | 2021-06-04 | EC2610 |  |  |  |  |  |  |  |  |
| EC2630 |  | UG Service + Drainage |  | 5d | 2021-06-07 | 2021-06-11 | EC2620 |  |  |  |  |  |  |  |  |
|  | 2 | **SuperStructure** |  |  | 2021-06-14 | 2021-08-09 |  |  |  |  |  |  |  |  |  |
| EC2450 |  | Ground Floor Beam |  | 5d | 2021-06-14 | 2021-06-18 | EC2630 |  |  | Concrete Foundation Subcontractor [39 h] | 3,900 | NOLAN | FOUND | CON |  |
| EC2470 |  | Ground Floor Slab |  | 5d | 2021-06-18 | 2021-06-25 | EC2450 |  | 5x10 | Laborer-Construction [49 h] | 1,715 | NOLAN | FOUND | CON |  |
| EC2480 |  | Waterproofing Foundation |  | 5.12d | 2021-06-28 | 2021-07-05 | EC2470 |  |  | Laborer-Construction [40 h] | 1,400 | NOLAN | FOUND | CON |  |
| EC2490 |  | Backfill |  | 5d | 2021-07-05 | 2021-07-12 | EC2480 |  |  | Laborer-Construction [39 h] | 1,365 | NOLAN | FOUND | CON |  |
| EC2500 |  | Ground Floor Walls |  | 5d | 2021-07-12 | 2021-07-19 | EC2490 |  |  | Laborer-Construction [39 h] | 1,365 | NOLAN | FOUND | CON |  |
| EC2510 |  | Ground Floor Columns |  | 5d | 2021-07-19 | 2021-07-26 | EC2500 |  |  | Laborer-Construction [40 h] | 1,400 | FOLEY | FOUND | CON |  |
| EC2550 |  | Stair and Elevator Masonry Structure |  | 5d | 2021-07-26 | 2021-08-02 | EC2510 |  |  | Laborer-Construction [39 h] | 1,365 | EVANS | FOUND | CON |  |
| EC2560 |  | Roof Slab/Collar Beam |  | 5d | 2021-08-02 | 2021-08-09 | EC2550 |  |  | Laborer-Construction [39.2 h] | 1,372 | EVANS | FOUND | CON |  |
|  | 2 | **Roof** |  |  | 2021-08-09 | 2021-08-30 |  |  |  |  |  |  |  |  |  |
| EC1390 |  | Place Roof Trusses and Sheathing |  | 5d | 2021-08-09 | 2021-08-16 | EC2560 |  |  | Roofing Subcontractor [39.2 h]; Specialty Metal Fabricator Subcontractor [39.2 h] | 7,252 | EVANS | STRUC | CON |  |
| EC1400 |  | Place Mechanical Equipment Supports |  | 5d | 2021-08-09 | 2021-08-16 | EC2560 |  |  | Roofing Subcontractor [39.2 h] | 2,940 | MASON | STRUC | ENG |  |
| EC1530 |  | Built-Up Asphalt Roofing |  | 5d | 2021-08-16 | 2021-08-23 | EC1400 |  |  | Roofing Subcontractor [39.2 h] | 2,940 | MASON | STRUC | CON |  |
| EC1540 |  | Felt and Tile Roofing |  | 5d | 2021-08-23 | 2021-08-30 | EC1530 |  |  | Roofing Subcontractor [39.2 h] | 2,940 | EVANS | STRUC | CON |  |
| EC1780 |  | Roof Complete | milestone | 0d | 2021-08-30 | 2021-08-30 | EC1540, EC1530 |  |  |  |  | MASON | STRUC | ENG | Key MS |

| ID | WBS | Activity | Type | Duration | Start | Finish | Predecessors | Resources | Cost | Phase | Responsibility | Department | Key Milestones |
| --- | --- | --- | --- | --- | --- | --- | --- | --- | --- | --- | --- | --- | --- |
|  | 3 | **Envelope** |  |  | 2021-08-30 | 2021-10-25 |  |  |  |  |  |  |  |
| EC1410 |  | Install Exterior Windows and Sliding Glass Doors Floor 1 |  | 5d | 2021-08-30 | 2021-09-06 | EC1540 | Thermal Protection Subcontractor [39.2 h] | 4,704 | CLOSE | EVANS | CON |  |
| EC1470 |  | Install Exterior Windows and Sliding Glass Doors Floor 2 |  | 5d | 2021-08-30 | 2021-09-06 | EC1410 FS-5d | Thermal Protection Subcontractor [39 h] | 4,680 | CLOSE | EVANS | ENG |  |
| EC1660 |  | Stucco Grey |  | 5d | 2021-09-06 | 2021-09-13 | EC1470 | Thermal Protection Subcontractor [39.2 h] | 4,704 | CLOSE | EVANS | CON |  |
| EC1360 |  | Mobilize Scaffolding |  | 5d | 2021-09-13 | 2021-09-20 | EC1780 FS+10d | Thermal Protection Subcontractor [39.2 h] | 4,704 | CLOSE | EVANS | CON |  |
| EC1690 |  | Stucco Finish Coat |  | 5d | 2021-09-13 | 2021-09-20 | EC1660 | Thermal Protection Subcontractor [39 h] | 4,680 | CLOSE | EVANS | CON |  |
| EC1490 |  | Install Backing & Cauld Windows Floor1 |  | 5d | 2021-09-20 | 2021-09-27 | EC1410 FS-4d, EC1360 | Thermal Protection Subcontractor [39 h] | 4,680 | CLOSE | EVANS | CON |  |
| EC1840 |  | Caulk |  | 5d | 2021-09-20 | 2021-09-27 | EC1690 | Thermal Protection Subcontractor [39 h] | 4,680 | CLOSE | HARIS | CON |  |
| EC1900 |  | Stucco Band Trim |  | 5d | 2021-09-27 | 2021-10-04 | EC1840 | Thermal Protection Subcontractor [40 h] | 4,800 | CLOSE | HARIS | CON |  |
| EC1980 |  | Paint Exterior |  | 5d | 2021-10-11 | 2021-10-18 | EC1900 FS+5d | Painter [40 h] | 2,800 | CLOSE | HARIS | CON |  |
| EC1990 |  | Install Railings |  | 5d | 2021-10-18 | 2021-10-25 | EC1980 SS+5d | Thermal Protection Subcontractor [40 h] | 4,800 | CLOSE | MILLS | CON |  |
| EC2110 |  | Demobilize Scaffolding |  | 5d | 2021-10-18 | 2021-10-25 | EC1980 | Thermal Protection Subcontractor [40 h] | 4,800 | CLOSE | HARIS | CON |  |
| EC2140 |  | Shell Complete | milestone | 0d | 2021-10-25 | 2021-10-25 | EC1990, EC2110 |  |  | CLOSE | MILLS | CON | Key MS |
|  | 4 | **Interior Finishes** |  |  |  |  |  |  |  |  |  |  |  |
|  | 5 | **Pool & Courtyard** |  |  |  |  |  |  |  |  |  |  |  |

## Activity codes

| Code | Value | Meaning |
| --- | --- | --- |
| Department | CON | Construction Department |
| Department | ENG | Engineering Department |
| Key Milestones | Key MS | Key Milestones |
| Phase | CLOSE | Close-In Phase |
| Phase | FOUND | Foundation Construction Phase |
| Phase | STRUC | Structural Phase |
| Responsibility | EVANS | Tim Evans |
| Responsibility | FOLEY | Meg Foley |
| Responsibility | HARIS | Linda Haris |
| Responsibility | MASON | Andy Mason |
| Responsibility | MILLS | Tom Mills |
| Responsibility | NOLAN | Joe Nolan |
